Schedule from MS Project, 2021-03-01 to 2021-08-04, status date 2021-04-06, costs in р., A marks actual dates.
Microsoft
Команда разработчиков из 16 человек занимается созданием карты города на основе собственного модуля отображения. Проект должен быть завершен в течение 6 месяцев. Бюджет проекта: 50 000 рублей

## Calendars

- Стандартный: Mon-Fri 09:00-13:00, 14:00-18:00; Sat-Sun off. Exceptions (off unless hours are given): 2021-03-08 (Международный женский день), 2021-05-03 (Майские каникулы), 2021-05-09 to 2021-05-10 (День победы), 2021-06-12 to 2021-06-14 (День России).

## Resources

| Resource | Group | Rate | Cost per use |
| --- | --- | --- | --- |
| Ведущий программист | Программирование | 10 | 100 |
| Программист#1 | Программирование | 7 | 50 |
| Программист#2 | Программирование | 7 | 50 |
| Программист#3 | Программирование | 7 | 50 |
| Программист#4 | Программирование | 7 | 50 |
| Системный аналитик | Анализ | 20 | 300 |
| Художник-дизайнер | Дизайн | 8 | 70 |
| Технический писатель | Документация | 5 | 20 |
| Web-дизайнер | Internet | 7 | 50 |
| 3D аниматор | Дизайн | 8 | 70 |
| Мультимедиа-корреспондент | М-медиа | 3 | 20 |
| Наборщик данных#1 | Ввод данных | 2 | 10 |
| Наборщик данных#2 | Ввод данных | 2 | 10 |
| Наборщик данных#3 | Ввод данных | 2 | 10 |
| Наборщик данных#4 | Ввод данных | 2 | 10 |
| Наборщик данных#5 | Ввод данных | 2 | 10 |
| Дополнительный сервер | Аренда | 2 |  |

## Schedule

| ID | WBS | Task | Type | Duration | Start | Finish | Predecessors | Complete | Remaining | Baseline start | Baseline finish | Baseline duration | Total slack | Free slack | Constraint | Resources | Work | Actual work | Cost | Baseline cost | Actual cost |
| --- | --- | --- | --- | --- | --- | --- | --- | --- | --- | --- | --- | --- | --- | --- | --- | --- | --- | --- | --- | --- | --- |
| 1 | 1 | Начало проекта | milestone | 0w | 2021-03-01 08:00 A | 2021-03-01 08:00 A |  | 100% |  | 2021-03-01 08:00 | 2021-03-01 08:00 | 0w |  |  |  |  |  |  |  |  |  |
| 2 | 2 | **Создание интерфейса** |  | 82.61d | 2021-03-09 09:00 A | 2021-07-06 14:50 | 1 | 84% | 13.04d | 2021-03-01 09:00 | 2021-06-17 11:52 | 74.36d | -11.54d | 0d |  |  | 560h | 320h | 5,650 | 5,650 | 3,610 |
| 3 | 2.1 | **Разработка дизайна интерфейса** |  | 25.62d | 2021-03-09 09:00 A | 2021-04-13 15:00 A |  | 100% |  | 2021-03-01 09:00 | 2021-04-06 15:00 | 25.62d |  |  |  |  | 320h | 320h | 2,770 | 2,770 | 2,770 |
| 4 | 2.1.1 | Разработка 2D графических элементов |  | 3w | 2021-03-09 09:00 A | 2021-04-05 09:12 A |  | 100% |  | 2021-03-01 09:00 | 2021-03-23 12:00 | 3w |  |  | start no earlier than 2021-03-09 09:00 | Художник-дизайнер | 120h | 120h | 1,030 | 1,030 | 1,030 |
| 5 | 2.1.2 | Разработка 3D графичиских элементов |  | 2w | 2021-03-09 09:00 A | 2021-03-23 11:00 A | 4SS | 100% |  | 2021-03-01 09:00 | 2021-03-16 11:00 | 2w |  |  |  | 3D аниматор | 80h | 80h | 710 | 710 | 710 |
| 6 | 2.1.3 | Создание заставки |  | 3w | 2021-03-23 11:00 A | 2021-04-13 15:00 A | 5 | 100% |  | 2021-03-16 11:00 | 2021-04-06 15:00 | 3w |  |  |  | 3D аниматор | 120h | 120h | 1,030 | 1,030 | 1,030 |
| 7 | 2.2 | Программирование интерфейса |  | 1.5w | 2021-06-25 09:50 | 2021-07-06 14:50 | 3, 12 |  |  | 2021-06-04 16:52 | 2021-06-17 11:52 | 1.5w | -11.54d | 0d |  | Программист#3; Программист#4; Программист#1; Программист#2 | 240h |  | 1,880 | 1,880 |  |
| 8 | 3 | **Построение базы объектов** |  | 92.1d | 2021-03-23 12:00 A | 2021-08-03 12:47 |  | 10% | 82.62d | 2021-03-23 12:00 | 2021-07-15 10:49 | 78.85d | 0.95d |  |  | Дополнительный сервер | 5912.79h | 392.54h | 16,015.58 | 15,099.64 | 2,337.07 |
| 9 | 3.1 | Анализ и построение структуры базы объектов |  | 2w | 2021-03-23 12:00 A | 2021-04-13 15:00 |  | 80% | 0.4w | 2021-03-23 12:00 | 2021-04-06 15:00 | 2w | 2.95d | 0d |  | Системный аналитик | 80h | 64h | 1,900 | 1,900 | 1,580 |
| 10 | 3.2 | Программирование средств обработки базы объектов |  | 1.55w | 2021-04-23 12:49 | 2021-05-07 12:47 | 9 |  |  | 2021-04-07 15:49 | 2021-04-19 10:49 | 1.5w | 0.95d | 0d |  | Программист#3; Программист#4; Программист#1; Программист#2 | 240h |  | 1,880 | 1,880 |  |
| 11 | 3.3 | Наполнение базы объектов |  | 12w | 2021-05-07 12:47 | 2021-08-03 12:47 | 10 |  |  | 2021-04-19 10:49 | 2021-07-15 10:49 | 12w | 0.95d |  |  | Наборщик данных#1; Наборщик данных#2; Наборщик данных#3; Наборщик данных#4; Наборщик данных#5 | 2400h |  | 4,850 | 4,850 |  |
| 12 | 4 | **Создание ядра GIS** |  | 75.11d | 2021-03-09 09:00 A | 2021-06-25 09:50 |  | 30% | 52.9d | 2021-03-01 09:00 | 2021-06-04 16:52 | 66.86d | 0d |  |  |  | 1880h | 425.45h | 18,196.34 | 18,196.34 | 4,854.47 |
| 13 | 4.1 | Анализ и проектирование ядра |  | 3.9w | 2021-03-09 09:00 A | 2021-04-09 15:00 |  | 38% | 2.4w | 2021-03-01 09:00 | 2021-03-23 12:00 | 3w | 0d |  | start no earlier than 2021-03-09 08:00 | Ведущий программист; Системный аналитик | 240h | 120h | 4,000 | 4,000 | 1,300 |
| 14 | 4.2 | Создание модели ядра |  | 2.02w | 2021-04-09 15:00 A | 2021-04-23 15:49 | 13 | 20% | 1.63w | 2021-03-23 12:00 | 2021-04-06 12:49 | 2.02w | 7.25d | 0d |  | Ведущий программист; Программист#1; Программист#2; Программист#3; Программист#4 | 400h | 78.82h | 3,336.46 | 3,336.46 | 888.18 |
| 15 | 4.3 | Тестирование модели ядра |  | 0.25w | 2021-04-23 15:49 | 2021-04-26 17:49 | 14 |  |  | 2021-04-06 12:49 | 2021-04-07 15:49 | 0.25w | 7.25d | 0d |  | Программист#1; Программист#2; Программист#3; Программист#4 | 40h |  | 480 | 480 |  |
| 16 | 4.4 | Создание рабочей версии ядра |  | 7.98w | 2021-04-26 17:49 A | 2021-06-25 09:50 | 15 | 29% | 5.69w | 2021-04-07 15:49 | 2021-06-04 16:52 | 8w | -10.92d | 0d |  | Ведущий программист; Программист#1; Программист#2; Программист#3; Программист#4 | 1200h | 226.63h | 9,379.88 | 9,379.88 | 2,366.28 |
| 17 | 5 | Создание мультимедиа - наполнения |  | 6w | 2021-04-13 15:00 | 2021-05-28 13:00 | 3 |  |  | 2021-04-06 15:00 | 2021-05-21 13:00 | 6w | 46.93d |  |  | Мультимедиа-корреспондент | 240h |  | 740 | 740 |  |
| 18 | 6 | Создание справочной системы |  | 2w | 2021-07-13 17:50 | 2021-07-28 09:50 | 7 |  |  | 2021-06-28 15:52 | 2021-07-12 17:52 | 2w | 5.32d |  |  | Технический писатель | 80h |  | 420 | 420 |  |
| 19 | 7 | **Создание руководства пользователя** |  | 26.92d | 2021-06-04 09:30 A | 2021-07-13 17:50 | 7FS-10d | 25% | 20.19d | 2021-06-02 11:52 | 2021-06-28 15:52 | 17.38d | 1.85d |  |  |  | 160h | 40h | 1,010 | 1,010 | 390 |
| 20 | 7.1 | Разработка дизайна руководства | manual | 1w | 2021-06-04 09:30 A | 2021-06-16 15:18 A |  | 100% |  | 2021-06-02 11:52 | 2021-06-09 12:52 | 1w |  |  | start no earlier than 2021-06-18 16:00 | Художник-дизайнер | 40h | 40h | 390 | 390 | 390 |
| 21 | 7.2 | Написание руководства пользователя |  | 3w | 2021-06-22 14:50 | 2021-07-13 17:50 | 20SS+2d |  |  | 2021-06-04 11:52 | 2021-06-28 15:52 | 3w | 1.85d | 0d |  | Технический писатель | 120h |  | 620 | 620 |  |
| 22 | 8 | **Создание web - сайта и поддержка** |  | 23.6d | 2021-06-22 14:50 A | 2021-07-26 10:38 |  | 8% | 21.66d | 2021-06-04 11:52 | 2021-07-08 17:52 | 23.62d | 0d |  |  |  | 248h | 40h | 2,106 | 2,106 | 390 |
| 23 | 8.1 | Разработка структуры сайта |  | 1d | 2021-06-22 14:50 | 2021-06-23 15:50 | 21SS |  |  | 2021-06-04 11:52 | 2021-06-07 11:52 | 1d | 1.85d | 0d |  | Web-дизайнер | 8h |  | 106 | 106 |  |
| 24 | 8.2 | Разработка дизайна сайта |  | 1.3w | 2021-06-23 15:50 A | 2021-07-02 17:38 | 23 | 29% | 0.93w | 2021-06-07 11:52 | 2021-06-17 14:52 | 1.4w | 0d |  |  | 3D аниматор; Web-дизайнер; Художник-дизайнер | 120h | 40h | 1,110 | 1,110 | 390 |
| 25 | 8.3 | Наполнение сайта |  | 3w | 2021-07-02 17:38 | 2021-07-26 10:38 | 24 |  |  | 2021-06-17 14:52 | 2021-07-08 17:52 | 3w | 0d |  |  | Web-дизайнер | 120h |  | 890 | 890 |  |
| 26 | 9 | Тестирование сайта |  | 2.44w | 2021-07-19 10:38 | 2021-08-04 12:25 | 22FS-1w |  |  | 2021-07-13 09:00 | 2021-07-29 10:46 | 2.44w | 0d |  | start no earlier than 2021-07-13 09:00 | Ведущий программист; Программист#1; Программист#2; Программист#3; Программист#4 | 480h |  | 3,944.45 | 3,944.45 |  |
| 27 | 10 | Сдача сайта в эксплуатацию | milestone | 0w | 2021-08-04 12:25 | 2021-08-04 12:25 | 26 |  |  | 2021-07-29 10:46 | 2021-07-29 10:46 | 0w | 0d |  |  |  |  |  |  |  |  |

| ID | WBS | Task | Duration | Start | Finish | Complete | Remaining | Baseline start | Baseline finish | Baseline duration | Total slack | Constraint | Resources | Work | Actual work | Cost | Baseline cost | Actual cost |
| --- | --- | --- | --- | --- | --- | --- | --- | --- | --- | --- | --- | --- | --- | --- | --- | --- | --- | --- |
| 28 | 11 | **Совещание** | 91.12d | 2021-03-03 09:00 A | 2021-07-14 10:00 | 33% | 61.24d | 2021-03-03 09:00 | 2021-07-14 10:00 | 91.12d | 15.3d |  |  | 140h | 46h | 1,220 | 1,220 | 390 |
| 29 | 11.1 | Совещание 1 | 1h | 2021-03-03 09:00 A | 2021-03-03 10:00 | 43% | 0.57h | 2021-03-03 09:00 | 2021-03-03 10:00 | 1h | 106.3d | start no earlier than 2021-03-03 08:00 | 3D аниматор; Web-дизайнер; Ведущий программист; Мультимедиа-корреспондент; Системный аналитик; Технический писатель; Художник-дизайнер | 7h | 3h | 61 | 61 | 26 |
| 30 | 11.2 | Совещание 2 | 1h | 2021-03-10 09:00 A | 2021-03-10 10:00 | 43% | 0.57h | 2021-03-10 09:00 | 2021-03-10 10:00 | 1h | 102.3d | start no earlier than 2021-03-10 08:00 | 3D аниматор; Web-дизайнер; Ведущий программист; Мультимедиа-корреспондент; Системный аналитик; Технический писатель; Художник-дизайнер | 7h | 3h | 61 | 61 | 26 |
| 31 | 11.3 | Совещание 3 | 1h | 2021-03-17 09:00 A | 2021-03-17 10:00 | 43% | 0.57h | 2021-03-17 09:00 | 2021-03-17 10:00 | 1h | 97.3d | start no earlier than 2021-03-17 08:00 | 3D аниматор; Web-дизайнер; Ведущий программист; Мультимедиа-корреспондент; Системный аналитик; Технический писатель; Художник-дизайнер | 7h | 3h | 61 | 61 | 26 |
| 32 | 11.4 | Совещание 4 | 1h | 2021-03-24 09:00 A | 2021-03-24 10:00 | 43% | 0.57h | 2021-03-24 09:00 | 2021-03-24 10:00 | 1h | 92.3d | start no earlier than 2021-03-24 08:00 | 3D аниматор; Web-дизайнер; Ведущий программист; Мультимедиа-корреспондент; Системный аналитик; Технический писатель; Художник-дизайнер | 7h | 3h | 61 | 61 | 26 |
| 33 | 11.5 | Совещание 5 | 1h | 2021-03-31 09:00 A | 2021-03-31 10:00 | 43% | 0.57h | 2021-03-31 09:00 | 2021-03-31 10:00 | 1h | 87.3d | start no earlier than 2021-03-31 08:00 | 3D аниматор; Web-дизайнер; Ведущий программист; Мультимедиа-корреспондент; Системный аналитик; Технический писатель; Художник-дизайнер | 7h | 3h | 61 | 61 | 26 |
| 34 | 11.6 | Совещание 6 | 1h | 2021-04-07 09:00 A | 2021-04-07 10:00 | 43% | 0.57h | 2021-04-07 09:00 | 2021-04-07 10:00 | 1h | 82.3d | start no earlier than 2021-04-07 09:00 | 3D аниматор; Web-дизайнер; Ведущий программист; Мультимедиа-корреспондент; Системный аналитик; Технический писатель; Художник-дизайнер | 7h | 3h | 61 | 61 | 26 |
| 35 | 11.7 | Совещание 7 | 1h | 2021-04-14 09:00 A | 2021-04-14 10:00 | 43% | 0.57h | 2021-04-14 09:00 | 2021-04-14 10:00 | 1h | 77.3d | start no earlier than 2021-04-14 08:00 | 3D аниматор; Web-дизайнер; Ведущий программист; Мультимедиа-корреспондент; Системный аналитик; Технический писатель; Художник-дизайнер | 7h | 3h | 61 | 61 | 26 |
| 36 | 11.8 | Совещание 8 | 1h | 2021-04-21 09:00 A | 2021-04-21 10:00 | 43% | 0.57h | 2021-04-21 09:00 | 2021-04-21 10:00 | 1h | 72.3d | start no earlier than 2021-04-21 08:00 | 3D аниматор; Web-дизайнер; Ведущий программист; Мультимедиа-корреспондент; Системный аналитик; Технический писатель; Художник-дизайнер | 7h | 3h | 61 | 61 | 26 |
| 37 | 11.9 | Совещание 9 | 1h | 2021-04-28 09:00 A | 2021-04-28 10:00 | 43% | 0.57h | 2021-04-28 09:00 | 2021-04-28 10:00 | 1h | 67.3d | start no earlier than 2021-04-28 08:00 | 3D аниматор; Web-дизайнер; Ведущий программист; Мультимедиа-корреспондент; Системный аналитик; Технический писатель; Художник-дизайнер | 7h | 3h | 61 | 61 | 26 |
| 38 | 11.10 | Совещание 10 | 1h | 2021-05-05 09:00 A | 2021-05-05 10:00 | 43% | 0.57h | 2021-05-05 09:00 | 2021-05-05 10:00 | 1h | 63.3d | start no earlier than 2021-05-05 08:00 | 3D аниматор; Web-дизайнер; Ведущий программист; Мультимедиа-корреспондент; Системный аналитик; Технический писатель; Художник-дизайнер | 7h | 3h | 61 | 61 | 26 |
| 39 | 11.11 | Совещание 11 | 1h | 2021-05-12 09:00 A | 2021-05-12 10:00 | 43% | 0.57h | 2021-05-12 09:00 | 2021-05-12 10:00 | 1h | 59.3d | start no earlier than 2021-05-12 08:00 | 3D аниматор; Web-дизайнер; Ведущий программист; Мультимедиа-корреспондент; Системный аналитик; Технический писатель; Художник-дизайнер | 7h | 3h | 61 | 61 | 26 |
| 40 | 11.12 | Совещание 12 | 1h | 2021-05-19 09:00 A | 2021-05-19 10:00 | 29% | 0.71h | 2021-05-19 09:00 | 2021-05-19 10:00 | 1h | 54.3d | start no earlier than 2021-05-19 08:00 | 3D аниматор; Web-дизайнер; Ведущий программист; Мультимедиа-корреспондент; Системный аналитик; Технический писатель; Художник-дизайнер | 7h | 2h | 61 | 61 | 16 |
| 41 | 11.13 | Совещание 13 | 1h | 2021-05-26 09:00 A | 2021-05-26 10:00 | 29% | 0.71h | 2021-05-26 09:00 | 2021-05-26 10:00 | 1h | 49.3d | start no earlier than 2021-05-26 08:00 | 3D аниматор; Web-дизайнер; Ведущий программист; Мультимедиа-корреспондент; Системный аналитик; Технический писатель; Художник-дизайнер | 7h | 2h | 61 | 61 | 16 |
| 42 | 11.14 | Совещание 14 | 1h | 2021-06-02 09:00 A | 2021-06-02 10:00 | 29% | 0.71h | 2021-06-02 09:00 | 2021-06-02 10:00 | 1h | 44.3d | start no earlier than 2021-06-02 08:00 | 3D аниматор; Web-дизайнер; Ведущий программист; Мультимедиа-корреспондент; Системный аналитик; Технический писатель; Художник-дизайнер | 7h | 2h | 61 | 61 | 16 |
| 43 | 11.15 | Совещание 15 | 1h | 2021-06-09 09:00 A | 2021-06-09 10:00 | 29% | 0.71h | 2021-06-09 09:00 | 2021-06-09 10:00 | 1h | 39.3d | start no earlier than 2021-06-09 08:00 | 3D аниматор; Web-дизайнер; Ведущий программист; Мультимедиа-корреспондент; Системный аналитик; Технический писатель; Художник-дизайнер | 7h | 2h | 61 | 61 | 16 |
| 44 | 11.16 | Совещание 16 | 1h | 2021-06-16 09:00 A | 2021-06-16 10:00 | 14% | 0.86h | 2021-06-16 09:00 | 2021-06-16 10:00 | 1h | 35.3d | start no earlier than 2021-06-16 08:00 | 3D аниматор; Web-дизайнер; Ведущий программист; Мультимедиа-корреспондент; Системный аналитик; Технический писатель; Художник-дизайнер | 7h | 1h | 61 | 61 | 8 |
| 45 | 11.17 | Совещание 17 | 1h | 2021-06-23 09:00 A | 2021-06-23 10:00 | 14% | 0.86h | 2021-06-23 09:00 | 2021-06-23 10:00 | 1h | 30.3d | start no earlier than 2021-06-23 08:00 | 3D аниматор; Web-дизайнер; Ведущий программист; Мультимедиа-корреспондент; Системный аналитик; Технический писатель; Художник-дизайнер | 7h | 1h | 61 | 61 | 8 |
| 46 | 11.18 | Совещание 18 | 1h | 2021-06-30 09:00 A | 2021-06-30 10:00 | 14% | 0.86h | 2021-06-30 09:00 | 2021-06-30 10:00 | 1h | 25.3d | start no earlier than 2021-06-30 08:00 | 3D аниматор; Web-дизайнер; Ведущий программист; Мультимедиа-корреспондент; Системный аналитик; Технический писатель; Художник-дизайнер | 7h | 1h | 61 | 61 | 8 |
| 47 | 11.19 | Совещание 19 | 1h | 2021-07-07 09:00 A | 2021-07-07 10:00 | 14% | 0.86h | 2021-07-07 09:00 | 2021-07-07 10:00 | 1h | 20.3d | start no earlier than 2021-07-07 08:00 | 3D аниматор; Web-дизайнер; Ведущий программист; Мультимедиа-корреспондент; Системный аналитик; Технический писатель; Художник-дизайнер | 7h | 1h | 61 | 61 | 8 |
| 48 | 11.20 | Совещание 20 | 1h | 2021-07-14 09:00 A | 2021-07-14 10:00 | 14% | 0.86h | 2021-07-14 09:00 | 2021-07-14 10:00 | 1h | 15.3d | start no earlier than 2021-07-14 08:00 | 3D аниматор; Web-дизайнер; Ведущий программист; Мультимедиа-корреспондент; Системный аналитик; Технический писатель; Художник-дизайнер | 7h | 1h | 61 | 61 | 8 |
